# 1200V,140mΩ

Schedule from a web Gantt chart, 2024-07-16 to 2026-03-26.
Every day is a working day

## Schedule

| ID | WBS | Task | Duration | Start | Finish | Predecessors | Complete | Status |
| --- | --- | --- | --- | --- | --- | --- | --- | --- |
| 2 | 1 | Kick off | 6d | 2024-07-16 | 2024-07-21 |  | 100% | done |
| 3 | 2 | Design & Layout | 17d | 2024-07-22 | 2024-08-07 |  | 100% | done |
| 4 | 3 | FT 调试 | 315d | 2024-10-09 | 2025-08-19 |  | 100% | done |
| 5 | 4 | **Pre-Qual(GB_7V,外环1ea/78 fail)** | 80d | 2025-08-20 | 2025-11-07 |  | 100% | done |
| 6 | 4.1 | RE168H | 9d | 2025-08-20 | 2025-08-28 |  | 100% | done |
| 7 | 4.2 | RE504H | 20d | 2025-08-28 | 2025-09-16 |  | 100% | done |
| 8 | 4.3 | RE1008H | 53d | 2025-09-16 | 2025-11-07 |  | 100% | done |
| 9 | 5 | **RSA_EPI:UItra2.1** | 50d | 2026-01-31 | 2026-03-21 |  |  |  |
| 10 | 5.1 | RE验证(补做3lots) | 50d | 2026-01-31 | 2026-03-21 |  |  | waiting |
| 11 | 6 | **Formal Qual(3lots)_EPI:DOE28T** | 137d | 2025-11-10 | 2026-03-26 |  | 21% |  |
| 12 | 6.1 | **1st lot** | 45d | 2026-01-16 | 2026-03-01 |  |  |  |
| 13 | 6.1.1 | RE1008H | 45d | 2026-01-16 | 2026-03-01 |  |  |  |
| 14 | 6.1.2 | Bench test | 14d | 2026-01-19 | 2026-02-01 |  |  |  |
| 16 | 6.2 | Fab Process & F/O | 36d | 2025-11-10 | 2025-12-15 |  | 19% |  |
| 17 | 6.3 | PKG & FT | 43d | 2025-12-01 | 2026-01-12 |  | 100% | done |
| 18 | 6.4 | **RE验证** | 73d | 2026-01-13 | 2026-03-26 |  |  |  |
| 19 | 6.4.1 | RE168H | 16d | 2026-01-13 | 2026-01-28 | 17 |  |  |
| 20 | 6.4.2 | RE504H | 24d | 2026-01-29 | 2026-02-21 | 19 |  | waiting |
| 21 | 6.4.3 | RE1008H | 33d | 2026-02-22 | 2026-03-26 | 20 |  | waiting |
| 22 | 6.5 | AE验证 | 14d | 2026-01-29 | 2026-02-11 | 19 |  | waiting |
| 23 | 6.6 | Bench test | 14d | 2026-01-29 | 2026-02-11 | 19 |  | waiting |
